# Restauración de Ventana

Schedule from MS Project, 2013-05-20 to 2013-05-30, status date 2002-04-19, costs in $.
This project outlines the tasks necessary for repairing a two-sash window in an old house. The "actual work" can only be performed on certain weekends. It consists of many short-duration tasks, but involves a lot of wait time for paints and adhesives to dry, which takes the projects over several months. / We will be attending a training class given by David Liberty, a window restoration expert who is sometimes featured on the PBS televison series "This Old House." / The work can only be performed on weekends, and the last day of each weekend (usually Sunday) is shortened. This schedule is reflected in the project's calendar. / Work must be completed in late September, when the weather turns cold. / Setup of workspace and shopping requires two resources. / The window consists of two sashes - upper and lower, so the sashes can be primed and painted by different people simultaneously. However, sanding and other tasks which raise dust require specialized tools, ony one set available so only one resource is assigned. / This is a pilot for a larger project - we have 8 windows!

## Calendars

- Standard: Mon-Fri 08:00-12:00, 13:00-17:00; Sat-Sun off.

## Resources

| Resource | Rate |
| --- | --- |
| Enrique Lopez | 200 |
| Diana Suarez | 150 |
| Viviana Salazar | 180 |
| Camioneta Carga | 500 |
| Escalera | 50 |
| Cubierta temporal | 50 |
| David Luna | 150 |
| Practicante 1 | 75 |
| Practicante 2 | 75 |

## Schedule

| ID | WBS | Task | Type | Duration | Start | Finish | Predecessors | Total slack | Resources | Work | Cost |
| --- | --- | --- | --- | --- | --- | --- | --- | --- | --- | --- | --- |
| 1 | 1 | **Entrenamiento** |  | 1d | 2013-05-20 08:00 | 2013-05-20 17:00 |  | 0d |  | 24h | 4,000 |
| 2 | 1.1 | Asistir al entrenamiento |  | 1d | 2013-05-20 08:00 | 2013-05-20 17:00 |  | 0d | Enrique Lopez; Diana Suarez; David Luna | 24h | 4,000 |
| 3 | 1.2 | Entrenamiento completo | milestone | 0d | 2013-05-20 17:00 | 2013-05-20 17:00 | 2 | 0d |  |  |  |
| 4 | 2 | **Plan del Proyecto revisado** |  | 0.12d | 2013-05-21 08:00 | 2013-05-21 09:00 |  | 0d |  | 1h | 200 |
| 5 | 2.1 | Revisar el Plan del Proyecto |  | 1h | 2013-05-21 08:00 | 2013-05-21 09:00 | 3 | 0d | Enrique Lopez | 1h | 200 |
| 6 | 2.2 | Plan del Proyecto revisado | milestone | 0d | 2013-05-21 09:00 | 2013-05-21 09:00 | 5 | 0d |  |  |  |
| 7 | 3 | **Entorno de trabajo** |  | 0.75d | 2013-05-21 09:00 | 2013-05-21 16:00 | 6 | 0d |  | 12h | 2,600 |
| 8 | 3.1 | Identificar las herramientas existentes |  | 1h | 2013-05-21 09:00 | 2013-05-21 10:00 | 4 | 0d | Enrique Lopez | 1h | 200 |
| 9 | 3.2 | Especificar los requisitos de compra |  | 1h | 2013-05-21 10:00 | 2013-05-21 11:00 | 8 | 0d | Enrique Lopez | 1h | 200 |
| 10 | 3.3 | Revisar las condiciones de las ventanas |  | 1h | 2013-05-21 09:00 | 2013-05-21 10:00 | 3 | 0d | Diana Suarez | 1h | 150 |
| 11 | 3.4 | Especificar los requisitos de materiales |  | 1h | 2013-05-21 10:00 | 2013-05-21 11:00 | 10 | 0d | Diana Suarez | 1h | 150 |
| 12 | 3.5 | Comprar herramientas y materiales |  | 4h | 2013-05-21 11:00 | 2013-05-21 16:00 | 9, 11 | 0d | Enrique Lopez; Diana Suarez; Camioneta Carga | 8h | 1,900 |
| 13 | 3.6 | Entorno de trabajo listo | milestone | 0d | 2013-05-21 16:00 | 2013-05-21 16:00 | 12 | 0d |  |  |  |
| 14 | 4 | **Eliminar** |  | 0.12d | 2013-05-21 16:00 | 2013-05-21 17:00 |  | 0d |  | 2h | 350 |
| 15 | 4.1 | Eliminar el marco |  | 1h | 2013-05-21 16:00 | 2013-05-21 17:00 | 13 | 0d | Enrique Lopez; Diana Suarez | 2h | 350 |
| 16 | 4.2 | Marco de la ventana eliminado | milestone | 0h | 2013-05-21 17:00 | 2013-05-21 17:00 | 15 | 0d |  |  |  |
| 17 | 5 | **Desmantelamiento** |  | 0.5d | 2013-05-22 08:00 | 2013-05-22 12:00 |  | 0d |  | 4h | 800 |
| 18 | 5.1 | Desmontar la ventana |  | 2h | 2013-05-22 08:00 | 2013-05-22 10:00 | 16 | 0d | Enrique Lopez | 2h | 400 |
| 19 | 5.2 | Desmantelar Ventana |  | 2h | 2013-05-22 10:00 | 2013-05-22 12:00 | 18 | 0d | Enrique Lopez | 2h | 400 |
| 20 | 5.3 | Ventana desmantelada | milestone | 0d | 2013-05-22 12:00 | 2013-05-22 12:00 | 19 | 0d |  |  |  |
| 21 | 6 | **Reparación** |  | 3.56d | 2013-05-22 13:00 | 2013-05-28 08:30 | 20 | 0d |  | 35h | 6,375 |
| 22 | 6.1 | Lijar la ventana |  | 2h | 2013-05-22 13:00 | 2013-05-22 15:00 |  | 0d | Enrique Lopez | 2h | 400 |
| 23 | 6.2 | Pegar la ventana |  | 1h | 2013-05-22 15:00 | 2013-05-22 16:00 | 22 | 0d | Enrique Lopez; Diana Suarez | 2h | 350 |
| 24 | 6.3 | Esperar que el pegamento seque |  | 4h | 2013-05-22 16:00 | 2013-05-23 11:00 | 23 | 0d | Enrique Lopez | 4h | 800 |
| 25 | 6.4 | Aplicar la primera capa de aceite de linaza |  | 1h | 2013-05-23 11:00 | 2013-05-23 12:00 | 24 | 0d | Enrique Lopez; Diana Suarez | 2h | 350 |
| 26 | 6.5 | Esperar para que el aceite de linaza seque |  | 4h | 2013-05-23 13:00 | 2013-05-23 17:00 | 25 | 0d | Enrique Lopez | 4h | 800 |
| 27 | 6.6 | Aplicar la segunda capa de aceite de linaza |  | 1h | 2013-05-24 08:00 | 2013-05-24 09:00 | 26 | 0d | Enrique Lopez; Diana Suarez | 2h | 350 |
| 28 | 6.7 | Esperar para que el aceite de linaza seque |  | 4h | 2013-05-24 09:00 | 2013-05-24 14:00 | 27 | 0d | Enrique Lopez | 4h | 800 |
| 29 | 6.8 | Lijar la ventana |  | 1h | 2013-05-24 14:00 | 2013-05-24 15:00 | 28 | 0d | Enrique Lopez | 1h | 200 |
| 30 | 6.9 | Aplicar esmalte para la ventana |  | 1h | 2013-05-24 15:00 | 2013-05-24 16:00 | 29 | 0d | Enrique Lopez; Diana Suarez | 2h | 350 |
| 31 | 6.10 | Esperar que el esmalte de la ventana |  | 4h | 2013-05-24 16:00 | 2013-05-27 11:00 | 30 | 0d | Enrique Lopez | 4h | 800 |
| 32 | 6.11 | lijar la ventana |  | 1h | 2013-05-27 11:00 | 2013-05-27 12:00 | 31 | 0d | Enrique Lopez | 1h | 200 |
| 33 | 6.12 | Insertar el vidrio en la ventana |  | 0.5h | 2013-05-27 13:00 | 2013-05-27 13:30 | 32 | 0d | Enrique Lopez; Diana Suarez | 3h | 175 |
| 34 | 6.13 | Esperar que el vidrio pegue |  | 4h | 2013-05-27 13:30 | 2013-05-28 08:30 | 33 | 0d | Enrique Lopez | 4h | 800 |

| ID | WBS | Task | Type | Duration | Start | Finish | Predecessors | Total slack | Free slack | Deadline | Resources | Work | Cost |
| --- | --- | --- | --- | --- | --- | --- | --- | --- | --- | --- | --- | --- | --- |
| 35 | 7 | **Pintado** |  | 6.44d | 2013-05-22 08:00 | 2013-05-30 11:30 |  | 0.12d |  |  |  | 62h | 11,250 |
| 36 | 7.1 | Esmalte en los rieles de la ventana |  | 2h | 2013-05-22 08:00 | 2013-05-22 10:00 | 16 | 4.06d | 0d |  | Diana Suarez; Enrique Lopez | 2h | 350 |
| 37 | 7.2 | Esperar que el esmalte seque |  | 1d | 2013-05-22 10:00 | 2013-05-23 10:00 | 36 | 4.06d | 0d |  | Diana Suarez | 8h | 1,200 |
| 38 | 7.3 | Pintar los rieles de la ventana |  | 2h | 2013-05-23 10:00 | 2013-05-23 12:00 | 37 | 4.06d | 0d |  | Enrique Lopez; Diana Suarez | 2h | 350 |
| 39 | 7.4 | Esperar que la pintura seque |  | 1d | 2013-05-23 13:00 | 2013-05-24 12:00 | 38 | 4.06d |  |  | Enrique Lopez; Diana Suarez | 16h | 2,800 |
| 40 | 7.5 | Pintar el interior de la ventana |  | 1h | 2013-05-27 13:30 | 2013-05-27 14:30 | 33 | 1.62d | 0d |  | Enrique Lopez; Diana Suarez | 2h | 350 |
| 41 | 7.6 | Esperar que la pintura seque |  | 4h | 2013-05-27 14:30 | 2013-05-28 09:30 | 40 | 1.62d | 0d |  | Enrique Lopez | 4h | 800 |
| 42 | 7.7 | Esmalte al exterior de la ventana |  | 1h | 2013-05-28 08:30 | 2013-05-28 09:30 | 34 | 0d |  |  | Enrique Lopez; Diana Suarez | 2h | 350 |
| 43 | 7.8 | Esperar que el esmalte seque |  | 1d | 2013-05-28 09:30 | 2013-05-29 09:30 | 42 | 0d |  |  | Enrique Lopez | 8h | 1,600 |
| 44 | 7.9 | Pintar el exterior de la ventana |  | 1h | 2013-05-29 09:30 | 2013-05-29 10:30 | 43 | 0d |  |  | Enrique Lopez; Diana Suarez | 2h | 350 |
| 45 | 7.10 | Esperar que la pintura seque |  | 4h | 2013-05-29 10:30 | 2013-05-29 15:30 | 44 | 0d |  |  | Enrique Lopez | 4h | 800 |
| 46 | 7.11 | Pintar la segunda capa del exterior |  | 1h | 2013-05-29 15:30 | 2013-05-29 16:30 | 45 | 0d |  |  | Enrique Lopez; Diana Suarez | 2h | 350 |
| 47 | 7.12 | Esperar que la pintura seque |  | 4h | 2013-05-29 16:30 | 2013-05-30 11:30 | 46 | 0d |  |  | Enrique Lopez | 4h | 800 |
| 48 | 7.13 | Pintar la segunda capa del interior |  | 1h | 2013-05-28 09:30 | 2013-05-28 10:30 | 41 | 1.62d | 0d |  | Enrique Lopez; Diana Suarez | 2h | 350 |
| 49 | 7.14 | Esperar que la pintura seque |  | 4h | 2013-05-28 10:30 | 2013-05-28 15:30 | 48 | 1.62d |  |  | Enrique Lopez | 4h | 800 |
| 50 | 7.15 | Reparación de la ventana completa | milestone | 0d | 2013-05-30 11:30 | 2013-05-30 11:30 | 47, 49 | 0d |  |  |  |  |  |
| 51 | 8 | **Reinstallation** |  | 0.25d | 2013-05-30 11:30 | 2013-05-30 14:30 |  | 0d |  |  |  | 4h | 700 |
| 52 | 8.1 | Establecer el área de trabajo |  | 1h | 2013-05-30 11:30 | 2013-05-30 13:30 | 50 | 0d |  |  | Enrique Lopez; Diana Suarez | 2h | 350 |
| 53 | 8.2 | Instalar el marco de ventana |  | 1h | 2013-05-30 13:30 | 2013-05-30 14:30 | 52, 39 | 0d |  |  | Enrique Lopez; Diana Suarez | 2h | 350 |
| 54 | 8.3 | Ventana Reinstalada | milestone | 0d | 2013-05-30 14:30 | 2013-05-30 14:30 | 53 | 0d |  | 2013-09-22 17:00 |  |  |  |
